Schedule from OmniPlan.
Project start 2016-04-23

## Resources

| Resource | Group |
| --- | --- |
| Resource 1 | staff |
| Equipment 1 | equipment |
| Material 1 | material |
| Group 1 | group |
| Evan | staff |
| Brad | staff |
| Sarah | staff |
| Bill | staff |

## Schedule

| ID | WBS | Task | Predecessors | Complete | Constraint | Resources | Work | Actual work |
| --- | --- | --- | --- | --- | --- | --- | --- | --- |
| 1 | 1 | **Offload unwanted or time-consuming services/responsibilities.** |  |  | start no earlier than 2016-04-25 |  |  |  |
| 2 | 1.1 | Migrate/remove Redmine |  | 100% |  |  | 2h | 2h |
| 3 | 1.2 | **Migrate RT to secondary provider or utilize RT engineers to upgrade our installation. Investigate providers.** |  |  |  |  |  |  |
| 4 | 1.2.1 | Research which provider or hosted solution is best. |  |  | start no earlier than 2016-07-29 | Bill | 40h |  |
| 5 | 1.2.2 | Work with provider to upgrade and maintain RT installation. | 4 |  | start no earlier than 2016-08-05 | Bill | 80h |  |
| 6 | 1.2.3 | Make an inventory of all of our ‘RT’ scrips and discard those which are no longer necessary for migration. |  |  | start no earlier than 2016-07-29 | Bill | 40h |  |
| 7 | 1.3 | **Migrate tape backup archive to BackBlaze.** |  |  | start no earlier than 2016-04-25 |  |  |  |
| 8 | 1.3.1 | Get BackBlaze certified with OGC/HUIT |  |  | start no earlier than 2016-07-29 | Evan | 8h |  |
| 9 | 1.3.2 | Buy and install host which performs backups |  |  | start no earlier than 2016-08-01 | Sarah | 8h |  |
| 10 | 1.3.3 | Work with BackBlaze to find the most efficient way of pushing this data |  | 100% | start no earlier than 2016-04-28 |  | 8h | 8h |
| 11 | 1.3.4 | Use HashBackup |  |  | start no earlier than 2016-08-01 | Evan | 40.25h |  |
| 12 | 1.3.5 | Measure performance and reliability of process; backup data to tapes and BackBlaze | 11 |  | start no earlier than 2016-05-02 | Evan | 40h |  |
| 13 | 1.3.6 | Find out what we need to backup, and when |  |  | start no earlier than 2016-08-01 | Sarah | 8h |  |
| 14 | 1.3.7 | Re-write documentation on backing up user, project data, and restoration to conform to BackBlaze backup system. |  |  | start no earlier than 2016-08-01 | Evan | 16h |  |
| 15 | 1.4 | **Migrate all web services, except ShinyServer, to Heroku, including DVN.** |  |  |  |  |  |  |
| 16 | 1.4.1 | Migrate and decommission Jenkins, reuse. |  |  | start no earlier than 2016-07-29 | Evan | 40h |  |
| 17 | 1.4.2 | Work with Salesforce/Heroku to build an HMDC Heroku Enterprise contract |  |  | start no earlier than 2016-07-29 | Evan | 40h |  |
| 18 | 1.4.3 | Create a basic-enterprise HMDC Heroku account with some limits. |  |  | start no earlier than 2016-08-01 | Evan | 8h |  |
| 19 | 1.4.4 | Give Raman access to a basic Heroku account and ask him to deploy Dataverse Network to its and its components. |  |  | start no earlier than 2016-07-29 | Evan | 16h |  |
| 20 | 1.4.5 | **Create a Heroku account and deploy Latanya’s PHP application to it.** |  |  |  |  |  |  |
| 21 | 1.4.5.1 | If successful, work with Latanya to migrate one of her websites entirely to Heroku to test the viability of this environment. |  |  | start no earlier than 2016-07-29 | Brad | 40h |  |
| 22 | 1.4.6 | Work with Heroku to determine enterprise pricing for the amount of web sites we host. |  |  | start no earlier than 2016-07-29 | Evan | 24h |  |
| 23 | 1.4.7 | Determine the best method to migrate our users permissions to Heroku: How much CPU time should they get? How much memory should they get? Should they be allowed to provision as many websites as they want, etc. |  |  | start no earlier than 2016-07-29 | Brad | 40h |  |
| 24 | 1.4.8 | Determine the best method for file storage on Heroku — using an S3 bucket, connecting to our local NetApp, etc. |  |  | start no earlier than 2016-07-29 | Brad | 40h |  |
| 25 | 1.4.9 | Work with Gary and Cris to decide how much support we provide for users in the Heroku environment: Do we help them setup GitHub repositories? Do we help them with basic PHP programming fundamentals, permissions? |  |  | start no earlier than 2016-07-29 | Brad | 24h |  |
| 26 | 1.4.10 | Migrate all sites to Heroku. Provide a deadline. |  |  | start no earlier than 2016-07-29 | Evan | 8h |  |
| 27 | 1.4.11 | Ask DVN to migrate their entire toolchain to Heroku. Provide a deadline. |  |  | start no earlier than 2016-08-01 | Evan | 8h |  |

Notes:
- 2: DVN will probably require a data backup.
- 3: RT provides both a hosted solution or you can hire a contractor to duplicate and upgrade your service. We should investigate which is preferable.
- 5: This would hopefully require little effort on our part.
- 15: Heroku is a layer on top of AWS which provides point-and-click deployment of PHP, Python, Ruby, and Node.JS applications. Requires basic familiarity with Github.
- 19: This should actually give them what they want — latest Python, automatically provisioning NGINX, etc.
- 20: Ask Latanya which PHP application we can migrate for testing — one that contains no important/sensitive data. Take this PHP application from /nfs/www and migrate it to Heroku.
- 22: Collect the amount of websites we host. The amount of PHP and/or Python websites we host does not account for very much.
- 25: We prefer a self-service model. If possible, make users perform the majority of the work, apart from initial account setup.
- 27: We may need to provision a Jenkins instance for them, although this may be provided by Heroku as well.

| ID | WBS | Task | Type | Predecessors | Constraint | Resources | Work |
| --- | --- | --- | --- | --- | --- | --- | --- |
| 28 | 2 | **Migrate/upgrade essential services.** |  | 1 |  |  |  |
| 29 | 2.1 | Migrate appropriate DHCP options to Amazon DHCP |  |  | start no earlier than 2016-08-01 |  | 40h |
| 30 | 2.2 | Migrate DNS to Route 53 |  |  | start no earlier than 2016-08-01 |  | 40h |
| 31 | 2.3 | Upgrade/migrate LDAP to CentOS 6/7/Amazon |  |  | start no earlier than 2016-08-01 | Bill | 160h |
| 32 | 3 | **Rectify Puppet manifests with AWS/Cloud and CentOS 7** |  | 28 |  |  |  |
| 33 | 3.1 | **Migrate hmdc-admin repository to GitHub** |  |  |  |  |  |
| 34 | 3.1.1 | Mine hmdc-admin for passwords and remove or place passwords elsewhere. |  |  | start no earlier than 2016-09-16 | Evan | 40h |
| 35 | 3.1.2 | Push de-password-ified hmdc-admin repository to GitHub. |  |  | start no earlier than 2016-09-16 | Evan | 8h |
| 36 | 3.1.3 | Retire HUIT GIT account, but keep a backup of hmdc-admin on NFS in case need to look at commit history. |  |  | start no earlier than 2016-09-16 | Evan | 1.5h |
| 37 | 3.2 | Test all pertinent modules on AWS, CentOS 7, make changes accordingly. |  |  | start no earlier than 2016-09-16 | Evan | 96h |
| 38 | 3.3 | Hiera-ify all data structures currently used in hmdc-admin, adding an $::operatingsystem entry to the Hiera tree. |  |  | start no earlier than 2016-09-16 | Brad | 40h |
| 39 | 3.4 | Write spec tests for all modules which lack spec tests. |  |  | start no earlier than 2016-09-16 | Brad | 80h |
| 40 | 4 | Create cloud agnostic template for RCE deployment |  |  | start no earlier than 2016-07-29 | Bill | 80h |
| 41 | 5 | AWS/AZURE/Cloud migration preparations complete | milestone | 32 | start no earlier than 2016-04-25 |  |  |
| 42 | 6 | **Prepare RCE/AWS/AZURE demo. environment** |  | 41SS | start no earlier than 2016-04-24 |  |  |
| 43 | 6.1 | Experiment with using Offline ClassAds to scale |  |  | start no earlier than 2016-10-04 | Evan | 40h |
| 44 | 6.2 | Reconfigure AWS/AZURE networking to expose a public interface for NX4 portal |  |  | start no earlier than 2016-08-01 | Bill | 32h |
| 45 | 6.3 | Install NX4/5 Portal (?) |  |  | start no earlier than 2016-10-04 | Evan | 80h |
| 46 | 6.4 | Install NX4/5 login nodes |  |  | start no earlier than 2016-10-04 | Evan | 80h |
| 47 | 6.5 | Deploy HTCondor collector/negotiator |  |  | start no earlier than 2016-10-04 | Evan | 40h |
| 48 | 6.6 | Deploy 2..3 high memory EC2 instances for HTCondor startd(s), permanent. |  |  | start no earlier than 2016-10-04 | Evan | 40h |
| 49 | 7 | **Production-ize RCE AWS/AZURE environment** |  | 42SS | start no earlier than 2016-05-02 |  |  |
| 50 | 7.1 | **Performance testing** |  |  | start no earlier than 2016-05-02 |  |  |
| 51 | 7.1.1 | Performance test NoMachine and XPRA latency, compared to local. |  |  | start no earlier than 2016-07-29 | Evan | 40h |

Notes:
- 31: Maybe put slave hosts in different zones? Expose via Amazon LB. We need to make sure this works for CentOS 7 as well if we go to Azure.
- 34: There may be a faster way of doing this. We may just want to truncate our Git history. Similarly, because we are moving to the Cloud, we may not need passwords like the Server Reports password statically defined inside our repository.

| ID | WBS | Task | Predecessors | Constraint | Resources | Work |
| --- | --- | --- | --- | --- | --- | --- |
| 52 | 7.2 | **Investigate using New Relic, Boundary, or Opsview.** |  | start no earlier than 2016-05-02 |  |  |
| 53 | 7.2.1 | Demo solutions in the cloud environment. |  | start no earlier than 2016-07-29 | Bill | 80h |
| 54 | 7.2.2 | Set-up appropriate alerts. |  | start no earlier than 2016-08-01 | Bill | 80h |
| 55 | 7.2.3 | Migrate pertinent monitors from OpsView to cloud solution, could be OpsView. |  | start no earlier than 2016-08-01 | Bill | 160h |
| 56 | 7.3 | Document monitoring |  | start no earlier than 2016-07-29 | Bill | 40h |
| 57 | 7.4 | Integrate monitoring with Puppet if necessary |  | start no earlier than 2016-08-01 | Evan | 80h |
| 58 | 7.5 | Determine proper default for amount of compute machines available, test autoscaling under average load. |  | start no earlier than 2016-08-01 | Evan | 8h |
| 59 | 7.6 | Reconfigure RCE Cluster Tools (rce_submit.py) to, instead of polling, send email notification when job is active. |  | start no earlier than 2016-08-01 | Evan | 8h |
| 60 | 8 | **Migrate most services to Cloud** | 49SS | start no earlier than 2016-05-02 |  |  |
| 61 | 8.1 | Slowly de-commission execute nodes, sell or move to recycling. |  | start no earlier than 2016-07-29 | Sarah | 40h |
| 62 | 8.2 | De-commission RCE Login nodes, sell or cycle, migrate licenses to Cloud. |  | start no earlier than 2016-07-29 | Sarah | 40h |
| 63 | 8.3 | With all web apps migrated to Heroku, turn off and recycle www-* hosts. |  | start no earlier than 2016-07-29 | Sarah | 40h |
| 64 | 8.4 | Migrate pertinent fs-4 tasks to another host, turn off and recycle fs-4. |  | start no earlier than 2016-07-29 | Sarah | 40h |
| 65 | 8.5 | With RT migrated to cloud provider, turn off RT and recycle. |  | start no earlier than 2016-07-29 | Sarah | 8h |
